# Software Development

Schedule from MS Project, 2014-10-27 to 2015-03-30, costs in $, A marks actual dates.

## Calendars

- Standard: Mon-Fri 08:00-12:00, 13:00-17:00; Sat-Sun off.

## Resources

| Resource | Rate |
| --- | --- |
| Kadra zarządzająca | 50 |
| Project Manager | 45 |
| Analityk | 40 |
| Deweloper | 35 |
| Testerzy | 20 |
| Trenerzy | 20 |
| Pomoc/Helpdesk | 15 |
| Deployment | 20 |
| Project Support | 20 |

## Schedule

| ID | WBS | Task | Type | Duration | Start | Finish | Predecessors | Complete | Remaining | Baseline start | Baseline finish | Baseline duration | Total slack | Free slack | Resources | Work | Actual work | Cost | Baseline cost | Actual cost | Text1 |
| --- | --- | --- | --- | --- | --- | --- | --- | --- | --- | --- | --- | --- | --- | --- | --- | --- | --- | --- | --- | --- | --- |
| 1 | 1 | **Analiza, ustalenie wymagań** |  | 9d | 2014-10-27 A | 2014-11-06 |  | 56% | 4d | 2014-10-27 | 2014-11-14 | 15d | 0d |  |  | 80h | 40h | 3,400 | 3,400 | 1,600 |  |
| 2 | 1.1 | Przeprowadzenie analizy wymagań |  | 5d | 2014-10-27 A | 2014-10-31 A |  | 100% |  | 2014-10-27 | 2014-10-31 | 5d |  |  | Analityk | 40h | 40h | 1,600 | 1,600 | 1,600 |  |
| 3 | 1.2 | Zapisanie wstępnego budżetu |  | 2d | 2014-11-03 | 2014-11-04 | 2 |  |  | 2014-11-03 | 2014-11-04 | 2d | 0d |  | Project Manager | 16h |  | 720 | 720 |  |  |
| 4 | 1.3 | Przeprowadzenie recencji budżetu/specyfikacji z resztą teamu |  | 4h | 2014-11-05 | 2014-11-05 | 3 |  |  | 2014-11-05 | 2014-11-05 | 4h | 0d |  | Project Manager; Analityk | 8h |  | 340 | 340 |  |  |
| 5 | 1.4 | Zaplanowanie kalendarza wypuszczania wersji produktu |  | 1d | 2014-11-05 | 2014-11-06 | 4 |  |  | 2014-11-05 | 2014-11-06 | 1d | 0d |  | Project Manager | 8h |  | 360 | 360 |  |  |
| 6 | 1.5 | Zdobycie zgody na dalsze działania przy zaplanowanym budżecie, kalendarzu I specyfikacji |  | 4h | 2014-11-06 | 2014-11-06 | 5 |  |  | 2014-11-06 | 2014-11-06 | 4h | 0d |  | Kadra zarządzająca; Project Manager | 8h |  | 380 | 380 |  |  |
| 7 | 1.6 | Analiza zakończona | milestone | 0d | 2014-11-06 | 2014-11-06 | 6 |  |  | 2014-11-06 | 2014-11-06 | 0d | 0d |  |  |  |  |  |  |  |  |
| 8 | 2 | **Projektowanie** |  | 14.5d | 2014-11-07 | 2014-11-27 |  |  |  | 2014-11-07 | 2014-11-27 | 14.5d | 15.75d | 0d |  | 120h |  | 5,100 | 5,100 |  |  |
| 9 | 2.1 | Recenzja wstępnej specyfikacji oprogramowania |  | 2d | 2014-11-07 | 2014-11-10 | 7 |  |  | 2014-11-07 | 2014-11-10 | 2d | 15.75d | 0d | Analityk | 16h |  | 640 | 640 |  |  |
| 10 | 2.2 | Sporządzenie wymagań funkcjonalnych |  | 5d | 2014-11-11 | 2014-11-17 | 9 |  |  | 2014-11-11 | 2014-11-17 | 5d | 15.75d | 0d | Analityk | 40h |  | 1,600 | 1,600 |  |  |
| 11 | 2.3 | Sporządzenie prototypu na bazie wymagań funkcjonalnych |  | 4d | 2014-11-18 | 2014-11-21 | 10 |  |  | 2014-11-18 | 2014-11-21 | 4d | 15.75d | 0d | Analityk | 32h |  | 1,280 | 1,280 |  |  |
| 12 | 2.4 | Recejzja wymagań funkcjonalnych |  | 2d | 2014-11-24 | 2014-11-25 | 11 |  |  | 2014-11-24 | 2014-11-25 | 2d | 15.75d | 0d | Kadra zarządzająca | 16h |  | 800 | 800 |  |  |
| 13 | 2.5 | Korekty wymagań funkcjonalnych po spotkaniu z klientem |  | 1d | 2014-11-26 | 2014-11-26 | 12 |  |  | 2014-11-26 | 2014-11-26 | 1d | 15.75d | 0d | Kadra zarządzająca | 8h |  | 400 | 400 |  |  |
| 14 | 2.6 | Pozywkanie zezwolenia na dalsze prace |  | 4h | 2014-11-27 | 2014-11-27 | 13 |  |  | 2014-11-27 | 2014-11-27 | 4h | 15.75d | 0d | Kadra zarządzająca; Project Manager | 8h |  | 380 | 380 |  |  |
| 15 | 2.7 | Projektowanie zakończone | milestone | 0d | 2014-11-27 | 2014-11-27 | 14 |  |  | 2014-11-27 | 2014-11-27 | 0d | 15.75d |  |  |  |  |  |  |  |  |
| 16 | 3 | **Implemementacja** |  | 45d | 2014-10-27 | 2014-12-26 |  |  |  | 2015-02-24 | 2015-05-27 | 67d | 0d |  |  | 264h |  | 9,240 | 9,240 |  | Sprint 2 |
| 17 | 3.1 | recenza wymagań funkcjolanych |  | 1d | 2014-10-27 | 2014-10-27 |  |  |  | 2015-02-24 | 2015-02-25 | 2d | 0d |  | Deweloper | 8h |  | 280 | 280 |  | Sprint 1 |
| 18 | 3.2 | Przydział załogi deweloperskiej |  | 2d | 2014-10-28 | 2014-10-30 | 17 |  |  | 2015-02-26 | 2015-03-04 | 4d | 0d |  | Deweloper | 16h |  | 560 | 560 |  | Sprint 1 |
| 19 | 3.3 | Develeping (rozwijanie) aplikacji |  | 15d | 2014-10-31 | 2014-11-20 | 18 |  |  | 2015-03-05 | 2015-04-15 | 30d | 0d |  | Deweloper | 120h |  | 4,200 | 4,200 |  | Sprint 1 |
| 20 | 3.4 | Debugowanie i rozwijanie testów |  | 15d | 2014-12-08 | 2014-12-26 | 19FS-7.5% |  |  | 2015-04-16 | 2015-05-27 | 30d | 0d |  | Deweloper | 120h |  | 4,200 | 4,200 |  | Sprint 1 |
| 21 | 3.5 | Development zakończony | milestone | 0d | 2014-12-26 | 2014-12-26 | 20 |  |  | 2015-05-27 | 2015-05-27 | 0d | 0d |  |  |  |  |  |  |  | Sprint 2 |
| 22 | 4 | **Testowanie** |  | 47d | 2014-11-27 | 2015-02-02 | 8 |  |  | 2015-02-24 | 2015-07-03 | 94d | 0d |  |  | 280h |  | 5,780 | 5,780 |  | Sprint 2 |
| 23 | 4.1 | Tworzenie planu testów jednostkowych |  | 4d | 2014-11-27 | 2014-12-05 |  |  |  | 2015-02-24 | 2015-04-16 | 8d | 15.75d |  | Testerzy | 32h |  | 640 | 640 |  | Sprint 2 |
| 24 | 4.2 | Tworzenie planu testów czasu wykonania |  | 4d | 2014-11-27 | 2014-12-08 |  |  |  | 2015-02-24 | 2015-04-17 | 8d | 27.5d |  | Testerzy | 32h |  | 640 | 640 |  | Sprint 2 |

| ID | WBS | Task | Type | Duration | Start | Finish | Predecessors | Baseline start | Baseline finish | Baseline duration | Total slack | Free slack | Resources | Work | Cost | Baseline cost | Text1 |
| --- | --- | --- | --- | --- | --- | --- | --- | --- | --- | --- | --- | --- | --- | --- | --- | --- | --- |
| 25 | 4.3 | **Testy jednostkowe** |  | 13.5d | 2014-12-29 | 2015-01-15 | 23 | 2015-05-28 | 2015-06-17 | 15d | 0d |  |  | 120h | 2,580 | 2,580 | Sprint 2 |
| 26 | 4.3.1 | Code review |  | 5d | 2014-12-29 | 2015-01-02 | 21, 23 | 2015-05-28 | 2015-06-03 | 5d | 0d |  | Testerzy | 40h | 800 | 800 | Sprint 2 |
| 27 | 4.3.2 | Testowanie kodu w odniesieniu do specyfikacji |  | 2d | 2015-01-05 | 2015-01-06 | 21, 26 | 2015-06-04 | 2015-06-05 | 2d | 0d |  | Testerzy | 16h | 320 | 320 | Sprint 2 |
| 28 | 4.3.3 | Identyfikacja niezgodności ze specyfikacją produktu |  | 1.5d | 2015-01-07 | 2015-01-08 | 27 | 2015-06-08 | 2015-06-10 | 3d | 0d |  | Testerzy; Deweloper | 24h | 660 | 660 | Sprint 1 |
| 29 | 4.3.4 | Modyfikacje kodu |  | 3d | 2015-01-08 | 2015-01-13 | 28 | 2015-06-11 | 2015-06-15 | 3d | 0d |  | Testerzy | 24h | 480 | 480 | Sprint 2 |
| 30 | 4.3.5 | Testowanie zmienionego kodu |  | 2d | 2015-01-13 | 2015-01-15 | 29 | 2015-06-16 | 2015-06-17 | 2d | 0d |  | Testerzy | 16h | 320 | 320 | Sprint 2 |
| 31 | 4.3.6 | Testowanie zakończone | milestone | 0d | 2015-01-15 | 2015-01-15 | 30 | 2015-06-17 | 2015-06-17 | 0d | 0d |  |  |  |  |  | Sprint 2 |
| 32 | 4.4 | **Testy integracyjne** |  | 12d | 2015-01-15 | 2015-02-02 | 24 | 2015-06-18 | 2015-07-03 | 12d | 0d |  |  | 96h | 1,920 | 1,920 | Sprint 2 |
| 33 | 4.4.1 | Testowanie zintegrowanych modułów |  | 5d | 2015-01-15 | 2015-01-22 | 31 | 2015-06-18 | 2015-06-24 | 5d | 0d |  | Testerzy | 40h | 800 | 800 | Sprint 2 |
| 34 | 4.4.2 | Identyfikacja anomalii w odniesieniu do specyfikacji produktu |  | 2d | 2015-01-22 | 2015-01-26 | 33 | 2015-06-25 | 2015-06-26 | 2d | 0d |  | Testerzy | 16h | 320 | 320 | Sprint 2 |
| 35 | 4.4.3 | Zmiany kodu |  | 3d | 2015-01-26 | 2015-01-29 | 34 | 2015-06-29 | 2015-07-01 | 3d | 0d |  | Testerzy | 24h | 480 | 480 | Sprint 2 |
| 36 | 4.4.4 | Testowanie zmienionego kodu |  | 2d | 2015-01-29 | 2015-02-02 | 35 | 2015-07-02 | 2015-07-03 | 2d | 0d |  | Testerzy | 16h | 320 | 320 | Sprint 2 |
| 37 | 4.4.5 | Testowanie integracyjne zakończone | milestone | 0d | 2015-02-02 | 2015-02-02 | 36 | 2015-07-03 | 2015-07-03 | 0d | 0d |  |  |  |  |  | Sprint 2 |
| 38 | 5 | **Dokumentacja** |  | 40d | 2015-02-02 | 2015-03-30 | 22 | 2014-10-27 | 2015-05-20 | 148d | 0d |  |  | 328h | 5,720 | 5,720 | Sprint 2 |
| 39 | 5.1 | Dokumentacja |  | 30.5d | 2015-02-02 | 2015-03-16 |  | 2014-10-27 | 2014-12-08 | 30.5d | 9.5d |  |  |  |  |  | Sprint 2 |
| 40 | 5.2 | Tworzenie systemu pomocy |  | 6w | 2015-02-02 | 2015-03-16 | 19FS-5% | 2015-03-26 | 2015-05-06 | 6w | 0d |  | Project Support [50%] | 120h | 2,400 | 2,400 | Sprint 2 |
| 41 | 5.3 | Recenzja dokumentacji supportowej |  | 6d | 2015-03-16 | 2015-03-24 | 40 | 2015-05-07 | 2015-05-14 | 6d | 0d |  | Project Support [50%] | 24h | 480 | 480 | Sprint 2 |
| 42 | 5.4 | Właczenie wyników feedbacku do dokumentacji supportowej |  | 4d | 2015-03-24 | 2015-03-30 | 41 | 2015-05-15 | 2015-05-20 | 4d | 0d |  | Project Support [50%] | 16h | 320 | 320 | Sprint 2 |
| 43 | 5.5 | Rozwijanie specyfikacji instrukcji użytkownika |  | 2d | 2015-02-02 | 2015-02-04 |  | 2015-02-24 | 2015-02-25 | 2d | 19d | 0d | Pomoc/Helpdesk | 16h | 240 | 240 | Sprint 2 |
| 44 | 5.6 | Rozwijanie instrukcji użytkownika |  | 3w | 2015-02-04 | 2015-02-25 | 19FS-5%, 43 | 2015-03-26 | 2015-04-15 | 3w | 19d | 0d | Pomoc/Helpdesk | 120h | 1,800 | 1,800 | Sprint 2 |
| 45 | 5.7 | Recenzja dokumentacji użytkownika |  | 2d | 2015-02-25 | 2015-02-27 | 44 | 2015-04-16 | 2015-04-17 | 2d | 19d | 0d | Pomoc/Helpdesk | 16h | 240 | 240 | Sprint 2 |
| 46 | 5.8 | Zmiana pod kątem feedback'u użytkownika |  | 2d | 2015-02-27 | 2015-03-03 | 45 | 2015-04-20 | 2015-04-21 | 2d | 19d |  | Pomoc/Helpdesk | 16h | 240 | 240 | Sprint 2 |
| 47 | 5.9 | Tworzenie dokumentacji zakończone | milestone | 0d | 2015-03-30 | 2015-03-30 | 42, 46 | 2015-05-20 | 2015-05-20 | 0d | 0d |  |  |  |  |  | Sprint 2 |
| 48 | 6 | **Deployment** |  | 4d | 2015-02-02 | 2015-02-06 | 22 | 2014-10-27 | 2014-10-30 | 4d | 36d |  |  | 32h | 640 | 640 | Sprint 2 |
| 49 | 6.1 | Określenie ostatecznej strategii wdrażania |  | 1d | 2015-02-02 | 2015-02-03 |  | 2014-10-27 | 2014-10-27 | 1d | 36d | 0d | Deployment | 8h | 160 | 160 | Sprint 1 |
| 50 | 6.2 | Określenie metodologii wdrażania |  | 1d | 2015-02-03 | 2015-02-04 | 49 | 2014-10-28 | 2014-10-28 | 1d | 36d | 0d | Deployment | 8h | 160 | 160 | Sprint 1 |
| 51 | 6.3 | Szkolenie teamu supportowego |  | 1d | 2015-02-04 | 2015-02-05 | 50 | 2014-10-29 | 2014-10-29 | 1d | 36d | 0d | Deployment | 8h | 160 | 160 |  |
| 52 | 6.4 | Wdrożenie |  | 1d | 2015-02-05 | 2015-02-06 | 51 | 2014-10-30 | 2014-10-30 | 1d | 36d | 0d | Deployment | 8h | 160 | 160 |  |
| 53 | 6.5 | Wdrożenie ukończone | milestone | 0d | 2015-02-06 | 2015-02-06 | 52 | 2014-10-30 | 2014-10-30 | 0d | 36d |  |  |  |  |  |  |
